# Quantum 2012 Management v0.2 08242012

Schedule from MS Project, 2012-03-01 to 2012-09-21, status date 2012-06-02, 2 hours a day, costs in $, A marks actual dates.

## Calendars

- Standard: Mon-Fri 08:00-12:00, 13:00-17:00; Sat-Sun off. Exceptions (off unless hours are given): 2012-06-02 08:00-12:00, 13:00-17:00, 2012-08-25 08:00-12:00, 13:00-17:00.

## Resources

| Resource | Group | Rate |
| --- | --- | --- |
| Quan Nguyen | PM | 10 |
| Dung Vu | TA | 10 |
| Tuan Nguyen | DEV | 3 |
| Dat Nguyen | DEV | 1 |
| Huy | DEV | 1 |
| Duy Anh | DEV | 1 |
| Thuy | DEV | 1 |
| Duy |  | 1 |

## Schedule

| ID | WBS | Task | Type | Duration | Start | Finish | Predecessors | Complete | Remaining | Total slack | Free slack | Constraint | Resources | Work | Actual work | Cost | Actual cost |
| --- | --- | --- | --- | --- | --- | --- | --- | --- | --- | --- | --- | --- | --- | --- | --- | --- | --- |
| 1 | 1 | **Quantum Desktop Version** |  | 596d? | 2012-03-01 A | 2012-09-21 |  | 28% | 430.88d? | 0d |  |  |  | 1492.8h | 301.2h | 5,726.2 | 1,740.8 |
| 2 | 1.1 | **Quantum version 2.0** |  | 596d? | 2012-03-01 A | 2012-09-21 |  | 44% | 332.65d? | 0d |  |  |  | 255.2h | 87.2h | 2,400.8 | 832.8 |
| 3 | 1.1.1 | Market Summary |  | 28d? | 2012-03-01 A | 2012-03-09 A |  | 100% |  |  |  | finish no earlier than 2012-03-09 | Dung Vu; Tuan Nguyen [10%]; Quan Nguyen [10%] | 67.2h | 67.2h | 632.8 | 632.8 |
| 4 | 1.1.2 | Gán Strategy cho từng Stocks - liên quan đến Alerts |  | 32h | 2012-09-10 | 2012-09-13 | 3, 8, 25 |  |  | 0d |  |  | Quan Nguyen [50%]; Dung Vu | 48h |  | 480 |  |
| 5 | 1.1.3 | Custom Alerts |  | 48h | 2012-09-14 | 2012-09-21 | 4, 7 |  |  | 0d |  |  | Dung Vu; Quan Nguyen [50%] | 72h |  | 720 |  |
| 6 | 1.1.4 | Vẽ Chart Technical |  | 10d? | 2012-03-20 A | 2012-03-22 A | 5 | 100% |  |  |  |  | Dung Vu | 20h | 20h | 200 | 200 |
| 7 | 1.1.5 | Stock Ranking - Mở rộng Category |  | 16h | 2012-09-10 | 2012-09-11 | 8, 25 |  |  | 8d |  |  | Dung Vu; Quan Nguyen; Tuan Nguyen | 48h |  | 368 |  |
| 8 | 1.2 | **Reporting & Email Module** |  | 244d? | 2012-06-18 | 2012-09-07 |  |  |  | 12d | 0d |  |  | 971.6h |  | 2,353.4 |  |
| 9 | 1.2.1 | **Analysis** |  | 20d? | 2012-08-27 | 2012-08-31 |  |  |  | 32d |  |  | Dung Vu [20%]; Quan Nguyen [10%]; Thuy; Duy Anh; Tuan Nguyen [30%] | 116h |  | 248 |  |
| 10 | 1.2.1.1 | Phân tích report thị trường | milestone | 0d | 2012-08-31 | 2012-08-31 |  |  |  | 32d |  | finish no earlier than 2012-08-31 | Duy Anh; Thuy |  |  |  |  |
| 11 | 1.2.1.2 | Phân tích report kỹ thuật |  | 1d? | 2012-08-27 | 2012-08-27 |  |  |  | 39d |  |  | Duy Anh; Thuy | 4h |  | 4 |  |
| 12 | 1.2.1.3 | Tạo các hàm để viết report |  | 1d? | 2012-08-27 | 2012-08-27 |  |  |  | 39d |  |  | Duy Anh; Thuy | 4h |  | 4 |  |
| 13 | 1.2.1.4 | Mapping hàm report và hàm Webservices |  | 1d? | 2012-08-27 | 2012-08-27 |  |  |  | 39d |  |  | Duy Anh; Thuy | 4h |  | 4 |  |
| 14 | 1.2.1.5 | Reports dành cho từng nhà đầu tư |  | 1d? | 2012-08-27 | 2012-08-27 |  |  |  | 39d |  |  |  |  |  |  |  |
| 15 | 1.2.2 | **Design** |  | 1d? | 2012-08-27 | 2012-08-27 |  |  |  | 39d |  |  | Thuy; Duy Anh; Tuan Nguyen [30%]; Dung Vu [20%]; Quan Nguyen [10%] | 5.2h |  | 11.8 |  |
| 16 | 1.2.2.1 | Thiết kế lớp xử lý Data |  | 1d? | 2012-08-27 | 2012-08-27 |  |  |  | 39d |  |  |  |  |  |  |  |
| 17 | 1.2.3 | **Implementation** |  | 40d? | 2012-08-27 | 2012-09-07 |  |  |  | 0d |  |  | Thuy; Duy Anh; Tuan Nguyen [30%]; Dung Vu [20%]; Quan Nguyen [10%] | 768h |  | 1,752 |  |
| 18 | 1.2.3.1 | Parse File ở cấu trúc docx/doc |  | 80h? | 2012-08-27 | 2012-09-07 |  |  |  | 0d |  | start no earlier than 2012-08-25 | Duy Anh; Thuy | 160h |  | 160 |  |
| 19 | 1.2.3.2 | Truyền tham số sang cho Report Data |  | 80h | 2012-08-27 | 2012-09-07 |  |  |  | 0d |  | start no earlier than 2012-08-25 | Duy Anh; Thuy | 160h |  | 160 |  |
| 20 | 1.2.3.3 | Tạo file docx, sử dụng OpenXML |  | 80h? | 2012-08-27 | 2012-09-07 |  |  |  | 0d |  | start no earlier than 2012-08-25 | Duy Anh; Thuy | 160h |  | 160 |  |
| 21 | 1.2.3.4 | Xây dựng Mapping |  | 80h? | 2012-08-27 | 2012-09-07 |  |  |  | 0d |  | start no earlier than 2012-08-25 | Dung Vu | 80h |  | 800 |  |
| 22 | 1.2.4 | **Testing** |  | 12d | 2012-08-27 | 2012-08-29 |  |  |  | 28d |  |  | Thuy; Duy Anh; Tuan Nguyen [30%]; Dung Vu [20%]; Quan Nguyen [10%] | 62.4h |  | 141.6 |  |
| 23 | 1.2.4.1 | Integration test |  | 24h | 2012-08-27 | 2012-08-29 |  |  |  | 28d |  |  |  |  |  |  |  |
| 24 | 1.2.5 | Integration với code |  | 20h | 2012-06-18 | 2012-06-20 |  |  |  | 246d |  | start no earlier than 2012-06-18 | Dung Vu | 20h |  | 200 |  |

Notes:
- 1: Proorities Orientation / - Định hướng phát triển các hŕm quan trọng / - Phát triển trước các hŕm có ảnh hưởng đến độ cảm nhận của khách hŕng / - Sửa các lỗi quan trong
- 14: report nŕy thông báo hŕng ngŕy / Nhŕ đầu tư[TENNHADAUTU] / Danh sách cổ phiếu sở hữu [LIST OF STOCKS] / Các tín hiệu mua bán lŕ [SIGNAL FOR LIST]

| ID | WBS | Task | Type | Duration | Start | Finish | Complete | Remaining | Total slack | Constraint | Deadline | Resources | Work | Actual work | Cost | Actual cost |
| --- | --- | --- | --- | --- | --- | --- | --- | --- | --- | --- | --- | --- | --- | --- | --- | --- |
| 25 | 1.3 | **Data Module** |  | 45d? | 2012-08-10 A | 2012-08-27 | 96% | 1.61d? | 39d |  |  |  | 168h | 168h | 240 | 240 |
| 26 | 1.3.1 | Tổng kết về các Website | milestone | 0d? | 2012-08-24 A | 2012-08-24 A | 100% |  |  | start no earlier than 2012-08-24 |  | Huy; Dat Nguyen; Quan Nguyen [10%]; Tuan Nguyen [10%]; Dung Vu [10%] |  |  |  |  |
| 27 | 1.3.2 | Đọc dữ liệu từ SSI |  | 40d? | 2012-08-10 A | 2012-08-24 A | 100% |  |  | finish no earlier than 2012-08-24 |  | Dat Nguyen; Huy; Dung Vu [10%] | 168h | 168h | 240 | 240 |
| 28 | 1.3.3 | Tích hợp vào hệ thống |  | 1d? | 2012-08-27 A | 2012-08-27 | 50% | 0.5d? | 39d |  |  |  |  |  |  |  |
| 29 | 1.3.4 | Document tổng hợp |  | 1d? | 2012-08-27 | 2012-08-27 |  |  | 39d |  |  |  |  |  |  |  |
| 30 | 1.4 | **Bug fix** |  | 248d? | 2012-06-01 A | 2012-08-24 | 52% | 118.9d? | 84d |  |  |  | 86h | 46h | 668 | 668 |
| 31 | 1.4.1 | XP/2003 installation |  | 28d? | 2012-06-01 A | 2012-06-08 | 29% | 20d? | 304d | start no earlier than 2012-06-01 |  | Dung Vu | 56h | 16h | 560 | 560 |
| 32 | 1.4.2 | Data Correction for VNIndex |  | 13.71d? | 2012-06-12 A | 2012-06-15 A | 100% |  |  | finish no earlier than 2012-06-15 |  | Dung Vu [9.4%]; Tuan Nguyen | 30h | 30h | 108 | 108 |
| 33 | 1.4.3 | Indicators và Chart | milestone | 0d? | 2012-08-24 | 2012-08-24 |  |  | 84d | start no earlier than 2012-08-24 |  | Tuan Nguyen; Dung Vu |  |  |  |  |
| 34 | 1.5 | **Non Functional Requirement** |  | 237d? | 2012-06-06 | 2012-08-27 |  |  | 59d |  |  |  | 12h |  | 64 |  |
| 35 | 1.5.1 | Webservices Optimisation |  | 4d? | 2012-06-06 | 2012-06-06 |  |  | 292d | start no earlier than 2012-06-06 |  | Dung Vu [50%]; Tuan Nguyen | 12h |  | 64 |  |
| 36 | 1.5.2 | Database Optimisation |  | 1d? | 2012-08-27 | 2012-08-27 |  |  | 59d |  |  |  |  |  |  |  |
| 37 | 2 | **Documentation** |  | 74d? | 2012-08-03 A | 2012-08-29 | 79% | 15.73d? | 70d |  |  |  | 506h | 448.8h | 4,174.5 | 4,141.5 |
| 38 | 2.1 | Requirement for Quantum Desktop v1.6 |  | 64d | 2012-08-06 A | 2012-08-25 | 80% | 12.8d | 80d | start no earlier than 2012-08-03 |  | Quan Nguyen; Dung Vu [50%]; Tuan Nguyen [50%] | 256h | 204.8h | 2,112 | 2,112 |
| 39 | 2.2 | Requirement for Quantum Admin v0.6 |  | 0.5d? | 2012-08-27 A | 2012-08-27 A | 100% |  |  |  |  | Quan Nguyen; Dung Vu [50%]; Tuan Nguyen [50%] | 2h | 2h | 16.5 | 16.5 |
| 40 | 2.3 | Quantum Database |  | 10d? | 2012-08-27 | 2012-08-29 |  |  | 70d |  |  | Quan Nguyen [10%]; Dung Vu [50%]; Tuan Nguyen [50%] | 4h |  | 33 |  |
| 41 | 2.4 | Quantum Architecture |  | 1d? | 2012-08-27 A | 2012-08-27 | 50% | 0.5d? | 79d |  |  | Quan Nguyen; Dung Vu [50%]; Tuan Nguyen [50%] | 4h | 2h | 33 | 33 |
| 42 | 2.5 | Quantum User Guide Tieng Viet |  | 40h | 2012-08-20 A | 2012-08-25 A | 100% |  |  | must finish on 2012-08-25 | 2012-08-27 | Quan Nguyen; Dung Vu [50%]; Tuan Nguyen [50%] | 80h | 80h | 660 | 660 |
| 43 | 2.6 | Quantum User Guide English 1.5 |  | 80h | 2012-08-03 A | 2012-08-17 A | 100% |  |  | finish no earlier than 2012-08-24 |  | Quan Nguyen; Dung Vu [50%]; Tuan Nguyen [50%] | 160h | 160h | 1,320 | 1,320 |
| 44 | 2.7 | Comment trong các module |  | 1d? | 2012-08-27 | 2012-08-27 |  |  | 79d |  |  |  |  |  |  |  |
| 45 | 2.8 | **Video hướng dẫn sử dụng/ hướng dẫn đầu tư** |  | 1d? | 2012-08-27 | 2012-08-27 |  |  | 79d |  |  |  |  |  |  |  |
| 46 | 2.8.1 | Mức độ 1 |  | 1d? | 2012-08-27 | 2012-08-27 |  |  | 79d |  |  |  |  |  |  |  |
| 47 | 2.8.2 | Mức độ 2 |  | 1d? | 2012-08-27 | 2012-08-27 |  |  | 79d |  |  |  |  |  |  |  |
| 48 | 2.8.3 | Mức độ 3 |  | 1d? | 2012-08-27 | 2012-08-27 |  |  | 79d |  |  |  |  |  |  |  |

Notes:
- 31: sẽ để sau
- 43: Quantum 2012 User Guide v1.4 23082012

| ID | WBS | Task | Type | Duration | Start | Finish | Predecessors | Complete | Remaining | Total slack | Free slack | Constraint | Resources | Work | Actual work | Cost | Actual cost |
| --- | --- | --- | --- | --- | --- | --- | --- | --- | --- | --- | --- | --- | --- | --- | --- | --- | --- |
| 49 | 2.9 | **Branding activities** |  | 1d? | 2012-08-27 | 2012-08-27 |  |  |  | 79d |  |  |  |  |  |  |  |
| 50 | 2.9.1 | Logo |  | 1d? | 2012-08-27 | 2012-08-27 |  |  |  | 79d |  |  |  |  |  |  |  |
| 51 | 2.9.2 | Bao bì phần mềm |  | 1d? | 2012-08-27 | 2012-08-27 |  |  |  | 79d |  |  |  |  |  |  |  |
| 52 | 3 | **Quantum Web** |  | 1d? | 2012-08-27 | 2012-08-27 |  |  |  | 0d | 79d |  |  | 3.2h | 3.2h | 11.2 | 11.2 |
| 53 | 3.1 | **Web design by inside team** |  | 1d? | 2012-08-27 | 2012-08-27 |  |  |  | 0d | 79d |  | Duy; Dung Vu [20%]; Tuan Nguyen [20%]; Quan Nguyen [20%] | 3.2h | 3.2h | 11.2 | 11.2 |
| 54 | 3.1.1 | Các chức năng trong phiên bản Web |  | 1d? | 2012-08-27 | 2012-08-27 |  |  |  | 79d |  |  |  |  |  |  |  |
| 55 | 3.1.2 | Thiết kế màn hình Login/My Profile |  | 1d? | 2012-08-27 | 2012-08-27 |  |  |  | 79d |  |  |  |  |  |  |  |
| 56 | 3.1.3 | Thiết kế màn hình chính |  | 1d? | 2012-08-27 | 2012-08-27 |  |  |  | 79d | 0d |  |  |  |  |  |  |
| 57 | 3.1.4 | Thiết kế màn hình tư vấn |  | 1d? | 2012-08-27 | 2012-08-27 |  |  |  | 79d |  |  |  |  |  |  |  |
| 58 | 3.1.5 | Thiết kế màn hình theo dõi Chart |  | 1d? | 2012-08-27 | 2012-08-27 |  |  |  | 79d |  |  |  |  |  |  |  |
| 59 | 3.2 | Web approved by PM | milestone | 0d | 2012-08-27 | 2012-08-27 | 56 |  |  | 79d |  | start no earlier than 2012-06-06 | Dung Vu; Quan Nguyen; Tuan Nguyen |  |  |  |  |
| 60 | 4 | **Quantum Mobile (iOS, Android)** |  | 4d? | 2012-09-03 A | 2012-09-03 |  | 10% | 3.6d? | 56d |  |  |  |  |  |  |  |
| 61 | 4.1 | Quantum Mobile draft design |  | 4d? | 2012-09-03 A | 2012-09-03 |  | 20% | 3.2d? | 56d |  | start no earlier than 2012-09-03 |  |  |  |  |  |
| 62 | 4.2 | I phone approved by PM |  | 4d? | 2012-09-03 | 2012-09-03 |  |  |  | 56d |  | start no earlier than 2012-09-03 |  |  |  |  |  |
